# 进度安排

Schedule from MS Project, 2009-09-21 to 2009-10-30, A marks actual dates.
asiainfo

## Calendars

- 标准: Mon-Fri 08:00-12:00, 13:00-17:00; Sat-Sun off. Exceptions (off unless hours are given): 2009-09-26 to 2009-09-27 08:00-12:00, 13:00-17:00, 2009-10-01 to 2009-10-04 08:00-12:00, 13:00-17:00, 2009-10-10 to 2009-10-11 08:00-12:00, 13:00-17:00, 2009-10-17 to 2009-10-18 08:00-12:00, 13:00-17:00, 2009-10-24 to 2009-10-25 08:00-12:00, 13:00-17:00.

## Resources

| Resource |
| --- |
| 李海武 |
| 卢菊平 |

## Schedule

| ID | WBS | Task | Duration | Start | Finish | Predecessors | Complete | Remaining | Total slack | Free slack | Constraint | Resources | Work | Actual work | Text1 |
| --- | --- | --- | --- | --- | --- | --- | --- | --- | --- | --- | --- | --- | --- | --- | --- |
| 1 | 1 | **公告栏** | 2d? | 2009-09-21 A | 2009-09-22 A |  | 100% |  |  |  |  |  | 16h | 16h |  |
| 2 | 1.1 | 公告发布,公告显示 | 1d? | 2009-09-21 A | 2009-09-21 A |  | 100% |  |  |  |  | 李海武 | 8h | 8h | 已经完成 |
| 3 | 1.2 | 公告管理 | 1d? | 2009-09-22 A | 2009-09-22 A |  | 100% |  |  |  | start no earlier than 2009-09-22 | 李海武 | 8h | 8h | 已经完成 |
| 4 | 2 | **留言板** | 2d? | 2009-09-23 A | 2009-09-24 A |  | 100% |  |  |  |  |  | 16h | 16h |  |
| 5 | 2.1 | 个人留言/查看留言/删除留言 | 1d? | 2009-09-23 A | 2009-09-23 A |  | 100% |  |  |  | start no earlier than 2009-09-23 | 李海武 | 8h | 8h | 已经完成 |
| 6 | 2.2 | 管理员查看/删除留言 | 1d? | 2009-09-24 A | 2009-09-24 A | 5 | 100% |  |  |  | start no earlier than 2009-09-24 | 李海武 | 8h | 8h | 已经完成 |
| 7 | 3 | **基本信息** | 10d? | 2009-09-25 A | 2009-10-04 A | 6 | 100% |  |  |  |  |  | 96h | 96h |  |
| 8 | 3.1 | 个人设置 | 1d? | 2009-09-25 A | 2009-09-25 A |  | 100% |  |  |  | start no earlier than 2009-09-25 | 李海武 | 8h | 8h | 已经完成 |
| 9 | 3.2 | 基本信息后台管理 | 2d | 2009-09-26 A | 2009-09-27 A | 8 | 100% |  |  |  | start no earlier than 2009-09-25 | 卢菊平 | 16h | 16h | 已经完成 |
| 10 | 3.3 | 修改密码 | 1d? | 2009-09-26 A | 2009-09-26 A | 9 | 100% |  |  |  | start no earlier than 2009-09-26 | 李海武 | 8h | 8h | 已经完成 |
| 11 | 3.4 | 虚拟房间设置 | 4d | 2009-09-27 A | 2009-09-30 A | 10 | 100% |  |  |  | start no earlier than 2009-09-27 | 李海武 | 32h | 32h | 已经完成 |
| 12 | 3.5 | 虚拟房间后台管理 | 2d | 2009-10-01 A | 2009-10-02 A | 11 | 100% |  |  |  | start no earlier than 2009-09-27 | 卢菊平 | 16h | 16h | 已经完成 |
| 13 | 3.6 | 终端列表 | 1d | 2009-10-03 A | 2009-10-03 A | 12 | 100% |  |  |  | start no earlier than 2009-09-27 | 卢菊平 | 8h | 8h | 已经完成 |
| 14 | 3.7 | 参会单位 | 1d | 2009-10-04 A | 2009-10-04 A | 13, 11 | 100% |  |  |  | start no earlier than 2009-09-27 | 卢菊平 | 8h | 8h | 已经完成 |
| 15 | 4 | **系统资源** | 15d? | 2009-09-29 A | 2009-10-13 |  | 25% | 11.25d? | 6d |  |  |  | 64h | 16h |  |
| 16 | 4.1 | 会议模板 | 2d | 2009-09-29 A | 2009-09-30 A |  | 100% |  |  |  | start no earlier than 2009-09-29 | 卢菊平 | 16h | 16h | 已经完成 |
| 17 | 4.2 | 资源占用情况 | 3d? | 2009-10-08 | 2009-10-10 | 21 |  |  | 6d | 0d | start no earlier than 2009-10-06 | 李海武 | 24h |  |  |
| 18 | 4.3 | 可用资源 | 3d? | 2009-10-11 | 2009-10-13 | 17 |  |  | 6d | 0d | start no earlier than 2009-10-09 | 李海武 | 24h |  |  |
| 19 | 5 | **会议管理** | 20d? | 2009-10-01 A | 2009-10-20 |  | 25% | 15d? | 10d |  |  |  | 96h | 24h |  |
| 20 | 5.1 | 预约会议 | 3d | 2009-10-01 A | 2009-10-03 | 11, 14 | 60% | 1.2d | 9.2d | 2d | start no earlier than 2009-10-01 | 李海武 | 24h | 14.4h |  |
| 21 | 5.2 | 预约管理 | 2d? | 2009-10-06 A | 2009-10-07 | 20 | 60% | 0.8d? | 6d | 0d | start no earlier than 2009-10-06 | 李海武 | 16h | 9.6h |  |
| 22 | 5.3 | 正在召开的会议 | 2d | 2009-10-14 | 2009-10-15 | 18 |  |  | 6d | 0d | start no earlier than 2009-10-12 | 李海武 | 16h |  |  |
| 23 | 5.4 | 当日会议安排 | 2d | 2009-10-16 | 2009-10-17 | 22 |  |  | 6d | 0d | start no earlier than 2009-10-14 | 李海武 | 16h |  |  |
| 24 | 5.5 | 本周会议安排 | 1d? | 2009-10-18 | 2009-10-18 | 23 |  |  | 10d | 0d | start no earlier than 2009-10-16 | 卢菊平 | 8h |  |  |
| 25 | 5.6 | 本月会议安排 | 1d? | 2009-10-19 | 2009-10-19 | 24 |  |  | 10d | 0d | start no earlier than 2009-10-17 | 卢菊平 | 8h |  |  |
| 26 | 5.7 | 所有会议安排 | 1d | 2009-10-20 | 2009-10-20 | 25 |  |  | 10d |  | start no earlier than 2009-10-18 | 卢菊平 | 8h |  |  |

| ID | WBS | Task | Duration | Start | Finish | Predecessors | Total slack | Free slack | Constraint | Resources | Work |
| --- | --- | --- | --- | --- | --- | --- | --- | --- | --- | --- | --- |
| 27 | 6 | **统计分析** | 4d | 2009-10-18 | 2009-10-21 |  | 6d |  |  |  | 32h |
| 28 | 6.1 | 用户使用次数排行 | 2d | 2009-10-18 | 2009-10-19 | 23 | 6d | 0d | start no earlier than 2009-10-16 | 李海武 | 16h |
| 29 | 6.2 | 用户会议召开次数排行 | 1d | 2009-10-20 | 2009-10-20 | 28 | 9d | 0d | start no earlier than 2009-10-18 | 卢菊平 | 8h |
| 30 | 6.3 | 用户单日会议召开次数排行 | 1d | 2009-10-21 | 2009-10-21 | 29 | 9d |  | start no earlier than 2009-10-19 | 卢菊平 | 8h |
| 31 | 7 | **日志管理** | 2d? | 2009-10-20 | 2009-10-21 |  | 6d |  |  |  | 16h |
| 32 | 7.1 | 日志记录 | 1d? | 2009-10-20 | 2009-10-20 | 28 | 6d | 0d | start no earlier than 2009-10-19 | 李海武 | 8h |
| 33 | 7.2 | 日志查询 | 1d? | 2009-10-21 | 2009-10-21 | 32 | 6d | 0d | start no earlier than 2009-09-26 | 李海武 | 8h |
| 34 | 8 | 外部系统 | 3d? | 2009-10-22 | 2009-10-24 | 33 | 6d |  | start no earlier than 2009-10-21 | 李海武 | 24h |
| 35 | 9 | 系统测试 | 7d? | 2009-10-20 | 2009-10-26 |  | 0d |  | start no earlier than 2009-10-20 | 卢菊平 | 56h |
| 36 | 10 | 文档编写 | 4d | 2009-10-27 | 2009-10-30 | 35 | 0d |  | start no earlier than 2009-10-27 | 卢菊平 | 32h |
